# HLS Development

Schedule from MS Project, 2020-12-01 to 2021-06-28, costs in ₽, A marks actual dates.

## Calendars

- Пятидневка: Mon-Fri 08:00-12:00, 13:00-17:00; Sat-Sun off.

## Resources

| Resource | Rate |
| --- | --- |
| Не назначено |  |
| Алексей Д. | 1500 |
| Павел Д. | 1400 |

## Schedule

| ID | WBS | Task | Duration | Start | Finish | Predecessors | Complete | Remaining | Total slack | Free slack | Constraint | Resources | Work | Actual work | Cost | Actual cost |
| --- | --- | --- | --- | --- | --- | --- | --- | --- | --- | --- | --- | --- | --- | --- | --- | --- |
| 1 | 1 | **Этап 1. Создание проекта/Авторизация/Чат** | 20.5d? | 2020-12-01 A | 2020-12-29 |  | 90% | 2.05d? | 0d |  |  |  | 170h | 153h | 248,000 | 223,300 |
| 2 | 1.1 | **Backend** | 8.75d? | 2020-12-01 A | 2020-12-14 |  | 89% | 1d? | -1d | 0d |  |  | 70h | 62h | 98,000 | 86,800 |
| 3 | 1.1.1 | Инфраструктура Heroku | 0.25d? | 2020-12-01 A | 2020-12-01 A |  | 100% |  |  |  |  | Павел Д. | 2h | 2h | 2,800 | 2,800 |
| 4 | 1.1.2 | Инициализация приложения | 0.5d? | 2020-12-01 A | 2020-12-02 A | 3 | 100% |  |  |  |  | Павел Д. | 4h | 4h | 5,600 | 5,600 |
| 5 | 1.1.3 | Авторизация и регистрация | 1d? | 2020-12-02 A | 2020-12-03 A | 4 | 100% |  |  |  |  | Павел Д. | 8h | 8h | 11,200 | 11,200 |
| 6 | 1.1.4 | Создание модели user | 0.25d? | 2020-12-03 A | 2020-12-03 A | 5 | 100% |  |  |  |  | Павел Д. | 2h | 2h | 2,800 | 2,800 |
| 7 | 1.1.5 | Обработка auth_token | 0.38d? | 2020-12-03 A | 2020-12-03 A | 6 | 100% |  |  |  |  | Павел Д. | 3h | 3h | 4,200 | 4,200 |
| 8 | 1.1.6 | Интеграция с sms центр | 0.5d | 2020-12-03 A | 2020-12-04 A | 7 | 100% |  |  |  |  | Павел Д. | 4h | 4h | 5,600 | 5,600 |
| 9 | 1.1.7 | Миграция данных для чатбота (Приветствие) | 1d | 2020-12-04 A | 2020-12-07 A | 8 | 100% |  |  |  |  | Павел Д. | 8h | 8h | 11,200 | 11,200 |
| 10 | 1.1.8 | Миграция данных для чат бота (Питание) | 1d | 2020-12-07 A | 2020-12-08 A | 9 | 100% |  |  |  |  | Павел Д. | 8h | 8h | 11,200 | 11,200 |
| 11 | 1.1.9 | Миграция данных для чатбота (Про жизнь) | 0.5d? | 2020-12-08 A | 2020-12-08 A | 10 | 100% |  |  |  |  | Павел Д. | 4h | 4h | 5,600 | 5,600 |
| 12 | 1.1.10 | Миграция данных для чатбота (Активность) | 1.38d? | 2020-12-08 A | 2020-12-10 A | 11 | 100% |  |  |  |  | Павел Д. | 11h | 11h | 15,400 | 15,400 |
| 13 | 1.1.11 | Фиксы и исправления по чатботу | 1d? | 2020-12-10 A | 2020-12-11 A | 12 | 100% |  |  |  |  | Павел Д. | 8h | 8h | 11,200 | 11,200 |
| 14 | 1.1.12 | Перенос всех фраз у чатбота и результирующие в базу данных | 1d? | 2020-12-11 | 2020-12-14 | 13 |  |  | -1d | 0d | finish no earlier than 2020-12-02 | Павел Д. | 8h |  | 11,200 |  |
| 15 | 1.2 | **Frontend** | 12.75d? | 2020-12-11 A | 2020-12-29 | 2 | 91% | 1.15d? | 0d |  |  |  | 100h | 91h | 150,000 | 136,500 |
| 16 | 1.2.1 | Создание и настройка проекта | 0.5d? | 2020-12-11 A | 2020-12-11 A | 2 | 100% |  |  |  |  | Алексей Д. | 4h | 4h | 6,000 | 6,000 |
| 17 | 1.2.2 | Навигация | 1.5d? | 2020-12-11 A | 2020-12-15 A |  | 100% |  |  |  |  | Алексей Д. | 12h | 12h | 18,000 | 18,000 |
| 18 | 1.2.3 | Верстка базовых компонентов | 1.5d? | 2020-12-15 A | 2020-12-16 A |  | 100% |  |  |  |  | Алексей Д. | 12h | 12h | 18,000 | 18,000 |
| 19 | 1.2.4 | Слайдер приветствие | 0.75d? | 2020-12-16 A | 2020-12-17 A |  | 100% |  |  |  |  | Алексей Д. | 6h | 6h | 9,000 | 9,000 |
| 20 | 1.2.5 | Авторизация | 0.75d? | 2020-12-17 A | 2020-12-18 A |  | 100% |  |  |  |  | Алексей Д. | 6h | 6h | 9,000 | 9,000 |
| 21 | 1.2.6 | Подтверждение кода | 0.75d? | 2020-12-18 A | 2020-12-18 A |  | 100% |  |  |  |  | Алексей Д. | 6h | 6h | 9,000 | 9,000 |
| 22 | 1.2.7 | Движок чата | 1.5d? | 2020-12-21 A | 2020-12-22 A |  | 100% |  |  |  |  | Алексей Д. | 12h | 12h | 18,000 | 18,000 |
| 23 | 1.2.8 | Опрос приветствие | 1.12d? | 2020-12-22 A | 2020-12-23 A |  | 100% |  |  |  |  | Алексей Д. | 9h | 9h | 13,500 | 13,500 |
| 24 | 1.2.9 | Опрос по питанию | 1.12d? | 2020-12-23 A | 2020-12-24 A |  | 100% |  |  |  |  | Алексей Д. | 9h | 9h | 13,500 | 13,500 |
| 25 | 1.2.10 | Опрос по образу жизни | 0.75d? | 2020-12-24 A | 2020-12-25 A |  | 100% |  |  |  |  | Алексей Д. | 6h | 6h | 9,000 | 9,000 |
| 26 | 1.2.11 | Опрос по состоянию здоровья | 2.25d? | 2020-12-25 A | 2020-12-29 |  | 50% | 1.12d? | 0d |  |  | Алексей Д. | 18h | 9h | 27,000 | 13,500 |

| ID | WBS | Task | Duration | Start | Finish | Predecessors | Complete | Remaining | Total slack | Free slack | Constraint | Resources | Work | Actual work | Cost | Actual cost |
| --- | --- | --- | --- | --- | --- | --- | --- | --- | --- | --- | --- | --- | --- | --- | --- | --- |
| 28 | 2 | **Этап 2. Каталог продуктов** | 48d? | 2020-12-29 A | 2021-03-05 | 1 | 29% | 33.99d? | -32.5d | 0d |  |  | 88h | 22h | 129,800 | 30,800 |
| 29 | 2.1 | **Backend** | 5d? | 2020-12-29 A | 2021-01-05 A |  | 100% |  |  |  |  |  | 22h | 22h | 30,800 | 30,800 |
| 30 | 2.1.1 | Каталог питания | 1d? | 2020-12-29 A | 2020-12-30 A |  | 100% |  |  |  |  | Павел Д. | 7h | 7h | 9,800 | 9,800 |
| 31 | 2.1.2 | Заполнение каталога продуктов | 1d? | 2020-12-30 A | 2020-12-31 A | 30 | 100% |  |  |  |  | Павел Д. | 2h | 2h | 2,800 | 2,800 |
| 32 | 2.1.3 | Создание базы данных иконок, интерфейс запроса иконок | 1d? | 2020-12-31 A | 2021-01-01 A | 31 | 100% |  |  |  |  | Павел Д. | 1h | 1h | 1,400 | 1,400 |
| 33 | 2.1.4 | Создание роли админа | 1d? | 2021-01-01 A | 2021-01-04 A | 32 | 100% |  |  |  |  | Павел Д. | 8h | 8h | 11,200 | 11,200 |
| 34 | 2.1.5 | Создание бд условий | 1d? | 2021-01-04 A | 2021-01-05 A | 33 | 100% |  |  |  |  | Павел Д. | 4h | 4h | 5,600 | 5,600 |
| 35 | 2.2 | **Frontend** | 14.5d? | 2021-02-15 | 2021-03-05 | 29 |  |  | -32.5d | 0d |  |  | 66h |  | 99,000 |  |
| 36 | 2.2.1 | Список категорий | 1.88d? | 2021-02-15 | 2021-02-17 |  |  |  | -30.12d | 0d | start no earlier than 2021-02-15 | Алексей Д. | 9h |  | 13,500 |  |
| 37 | 2.2.2 | Список подкатегорий | 2d? | 2021-02-17 | 2021-02-19 | 36 |  |  | -30.12d | 0d |  | Алексей Д. | 9h |  | 13,500 |  |
| 38 | 2.2.3 | Отображение продукта | 2.88d? | 2021-02-19 | 2021-02-24 | 37 |  |  | -30.12d | 0d |  | Алексей Д. | 18h |  | 27,000 |  |
| 39 | 2.2.4 | Дашбоард (верстка) | 1.5d? | 2021-02-26 | 2021-03-01 | 38 |  |  | -32.5d | 0d | finish no earlier than 2021-03-01 | Алексей Д. | 12h |  | 18,000 |  |
| 40 | 2.2.5 | Фильтрация каталога | 1.88d? | 2021-03-02 | 2021-03-03 | 39 |  |  | -32.5d | 0d |  | Алексей Д. | 9h |  | 13,500 |  |
| 41 | 2.2.6 | Поиск по каталогу | 2d? | 2021-03-03 | 2021-03-05 | 40 |  |  | -32.5d | 0d |  | Алексей Д. | 9h |  | 13,500 |  |
| 43 | 3 | **Этап 3. Дашборд/профиль** | 46.38d? | 2021-01-20 A | 2021-03-25 | 28 | 41% | 27.54d? | 9.38d |  |  |  | 106h | 27.3h | 154,000 | 38,220 |
| 44 | 3.1 | **Backend** | 35d? | 2021-01-20 A | 2021-03-10 |  | 76% | 8.55d? | 9.38d | 0d |  |  | 50h | 27.3h | 70,000 | 38,220 |
| 45 | 3.1.1 | Каталог знаний | 1d | 2021-01-20 A | 2021-01-21 A |  | 100% |  |  |  |  | Павел Д. | 8h | 8h | 11,200 | 11,200 |
| 46 | 3.1.2 | Загрузка файлов на сервер | 1d | 2021-01-21 A | 2021-01-21 A | 45 | 100% |  |  |  |  | Павел Д. | 4h | 4h | 5,600 | 5,600 |
| 47 | 3.1.3 | Интерфейс добавления статей | 1d | 2021-01-22 A | 2021-01-22 A | 46 | 100% |  |  |  |  | Павел Д. | 1h | 1h | 1,400 | 1,400 |
| 48 | 3.1.4 | Обновление профиля пользователя | 1d | 2021-01-25 A | 2021-01-26 A | 47 | 100% |  |  |  |  | Павел Д. | 2h | 2h | 2,800 | 2,800 |
| 49 | 3.1.5 | Сохранение ключевых ответов в профиле пользователя | 1d | 2021-01-26 A | 2021-01-27 A | 48 | 100% |  |  |  |  | Павел Д. | 2h | 2h | 2,800 | 2,800 |
| 50 | 3.1.6 | Подсчёт уровня здоровья | 1d | 2021-01-27 A | 2021-01-28 A | 49 | 100% |  |  |  |  | Павел Д. | 2h | 2h | 2,800 | 2,800 |
| 51 | 3.1.7 | Добавление таблиц для учета еды, тренировок, сна | 0.51d | 2021-01-28 A | 2021-01-28 | 50 | 59% | 0.21d | 37.86d |  |  | Павел Д. | 2h | 0.3h | 2,800 | 420 |
| 52 | 3.1.8 | Подсчёт нормы калорий | 1d? | 2021-02-02 A | 2021-02-03 A | 51 | 100% |  |  |  |  | Павел Д. | 1h | 1h | 1,400 | 1,400 |
| 53 | 3.1.9 | Вывод норм и границ для еды в течении дня | 1d? | 2021-02-03 A | 2021-02-04 A | 52 | 100% |  |  |  |  | Павел Д. | 4h | 4h | 5,600 | 5,600 |
| 54 | 3.1.10 | Календарь тренировок | 1d? | 2021-02-04 A | 2021-02-05 A | 53 | 100% |  |  |  |  | Павел Д. | 2h | 2h | 2,800 | 2,800 |
| 55 | 3.1.11 | Динамика здоровья | 0.62d | 2021-02-08 A | 2021-02-08 | 54 | 40% | 0.38d | 19.38d | 18.88d |  | Павел Д. | 4h | 1h | 5,600 | 1,400 |
| 56 | 3.1.12 | Значения для шкалы режима в дашборде | 0.5d? | 2021-03-05 | 2021-03-08 | 55 |  |  | 0.5d | 0d |  | Павел Д. | 4h |  | 5,600 |  |
| 57 | 3.1.13 | Значения для шкалы движения в дашборде | 0.75d? | 2021-03-08 | 2021-03-09 | 56 |  |  | 0.5d | 0d |  | Павел Д. | 6h |  | 8,400 |  |
| 58 | 3.1.14 | Значения для шкалы питания в дашборде | 1d | 2021-03-09 | 2021-03-10 | 57 |  |  | 0.5d | 0d |  | Павел Д. | 6h |  | 8,400 |  |
| 59 | 3.1.15 | Подсказки для дашборда | 0.25d? | 2021-03-10 | 2021-03-10 | 58 |  |  | 0.5d | 0d |  | Павел Д. | 2h |  | 2,800 |  |

| ID | WBS | Task | Duration | Start | Finish | Predecessors | Complete | Remaining | Total slack | Free slack | Constraint | Resources | Work | Actual work | Cost | Actual cost |
| --- | --- | --- | --- | --- | --- | --- | --- | --- | --- | --- | --- | --- | --- | --- | --- | --- |
| 60 | 3.2 | **Frontend** | 11.38d? | 2021-03-10 | 2021-03-25 |  |  |  | 9.38d |  |  |  | 56h |  | 84,000 |  |
| 61 | 3.2.1 | Дашбоард (подсадка) | 1.88d? | 2021-03-10 | 2021-03-12 | 44 |  |  | 9.38d | 0d |  | Алексей Д. | 8h |  | 12,000 |  |
| 62 | 3.2.2 | **Компонент просмотра конента (каталог знаний)** | 4.75d? | 2021-03-12 | 2021-03-18 | 61 |  |  | 9.38d | 0d |  |  | 24h |  | 36,000 |  |
| 63 | 3.2.2.1 | Список статей | 0.88d? | 2021-03-12 | 2021-03-15 |  |  |  | 9.38d | 0d |  | Алексей Д. | 6h |  | 9,000 |  |
| 64 | 3.2.2.2 | Компонент типа новость | 1d? | 2021-03-15 | 2021-03-16 | 63 |  |  | 9.38d | 0d |  | Алексей Д. | 6h |  | 9,000 |  |
| 65 | 3.2.2.3 | Компонент типа сторис (упрощен объект) | 1.38d? | 2021-03-16 | 2021-03-17 | 64 |  |  | 9.38d | 0d |  | Алексей Д. | 6h |  | 9,000 |  |
| 66 | 3.2.2.4 | Компонент типа видео | 1.5d? | 2021-03-17 | 2021-03-18 | 65 |  |  | 9.38d |  |  | Алексей Д. | 6h |  | 9,000 |  |
| 67 | 3.2.3 | **Результаты анкетирования/профиль** | 4.75d? | 2021-03-19 | 2021-03-25 | 62 |  |  | 9.38d |  |  |  | 24h |  | 36,000 |  |
| 68 | 3.2.3.1 | Верстка/подсадка | 0.88d? | 2021-03-19 | 2021-03-19 | 62 |  |  | 9.38d | 0d |  | Алексей Д. | 6h |  | 9,000 |  |
| 69 | 3.2.3.2 | Макроцикл | 1d? | 2021-03-19 | 2021-03-22 | 68 |  |  | 9.38d | 0d |  | Алексей Д. | 6h |  | 9,000 |  |
| 70 | 3.2.3.3 | Мезоцикл | 1.38d? | 2021-03-22 | 2021-03-24 | 69 |  |  | 9.38d | 0d |  | Алексей Д. | 6h |  | 9,000 |  |
| 71 | 3.2.3.4 | Редактирование профиля | 1d? | 2021-03-24 | 2021-03-25 | 70 |  |  | 9.38d | 0d |  | Алексей Д. | 6h |  | 9,000 |  |
| 73 | 4 | **Этап 4. Режим дня/Движение** | 26.5d? | 2021-03-10 A | 2021-04-15 |  | 9% | 24.15d? | 7d |  |  |  | 109h | 12.5h | 160,100 | 17,500 |
| 74 | 4.1 | **Backend** | 9.62d? | 2021-03-10 A | 2021-03-23 |  | 36% | 6.17d? | 11.12d | 1.75d |  |  | 34h | 12.5h | 47,600 | 17,500 |
| 75 | 4.1.1 | Создание дневного расписания | 0.81d? | 2021-03-10 A | 2021-03-11 | 59 | 62% | 0.31d? | 19.19d | 0d |  | Павел Д. | 5h | 2.5h | 7,000 | 3,500 |
| 76 | 4.1.2 | Создание ночного расписания | 0.12d? | 2021-03-11 | 2021-03-11 | 75 |  |  | 19.19d | 0d |  | Павел Д. | 1h |  | 1,400 |  |
| 77 | 4.1.3 | Update события дня | 0.38d? | 2021-03-11 | 2021-03-11 | 76 |  |  | 19.19d | 0d |  | Павел Д. | 3h |  | 4,200 |  |
| 78 | 4.1.4 | Рекоммендации и подсказки | 0.12d? | 2021-03-11 | 2021-03-11 | 77 |  |  | 19.19d | 0d |  | Павел Д. | 1h |  | 1,400 |  |
| 79 | 4.1.5 | Парсинг таблицы тренировок | 0.12d? | 2021-03-11 | 2021-03-11 | 78 |  |  | 19.19d |  |  | Павел Д. | 1h |  | 1,400 |  |
| 80 | 4.1.6 | Каталог тренировок API | 1d? | 2021-03-17 A | 2021-03-19 A | 79 | 100% |  |  |  |  | Павел Д. | 10h | 10h | 14,000 | 14,000 |
| 81 | 4.1.7 | Трекинг тренировки (пачками) для realtime type traning | 1d? | 2021-03-22 | 2021-03-23 | 80 |  |  | 11.12d | 0d | start no earlier than 2021-03-22 | Павел Д. | 8h |  | 11,200 |  |
| 82 | 4.1.8 | Диапазоны для графиков | 0.12d? | 2021-03-23 | 2021-03-23 | 81 |  |  | 11.12d | 0d |  | Павел Д. | 1h |  | 1,400 |  |
| 83 | 4.1.9 | Трекинг исторических данных для тренировок | 0.5d? | 2021-03-23 | 2021-03-23 | 82 |  |  | 11.12d | 0d |  | Павел Д. | 4h |  | 5,600 |  |
| 84 | 4.2 | **Frontend** | 15.12d? | 2021-03-25 | 2021-04-15 | 74 |  |  | 7d |  |  |  | 75h |  | 112,500 |  |
| 85 | 4.2.1 | Режим дня (ночь) | 1.88d? | 2021-03-25 | 2021-03-29 | 71 |  |  | 9.38d | 0.38d |  | Алексей Д. | 12h |  | 18,000 |  |
| 86 | 4.2.2 | Режим дня (день) | 2.38d? | 2021-03-30 | 2021-04-01 | 85 |  |  | 9d | 0.62d | start no earlier than 2021-03-30 | Алексей Д. | 18h |  | 27,000 |  |
| 87 | 4.2.3 | Добавить данные (отметьте тренировку на часах) | 1d? | 2021-04-02 | 2021-04-02 | 86 |  |  | 8.38d | 0.12d | start no earlier than 2021-04-02 | Алексей Д. | 6h |  | 9,000 |  |
| 88 | 4.2.4 | Добавить тренировку поиск | 0.75d? | 2021-04-05 | 2021-04-05 | 87 |  |  | 8.25d | 0.12d | start no earlier than 2021-04-05 | Алексей Д. | 6h |  | 9,000 |  |
| 89 | 4.2.5 | Добавить тренировку (каталог) | 1.5d? | 2021-04-06 | 2021-04-07 | 88 |  |  | 8.12d | 0.62d | start no earlier than 2021-04-06 | Алексей Д. | 9h |  | 13,500 |  |
| 90 | 4.2.6 | Резутаты после добавления | 1.5d? | 2021-04-08 | 2021-04-09 | 89 |  |  | 7.5d | 0.5d | start no earlier than 2021-04-08 | Алексей Д. | 6h |  | 9,000 |  |
| 91 | 4.2.7 | Каталог тренировок таб | 1.75d? | 2021-04-12 | 2021-04-13 | 90 |  |  | 7d | 0d | start no earlier than 2021-04-12 | Алексей Д. | 6h |  | 9,000 |  |
| 92 | 4.2.8 | Просмотр тренировки | 2d? | 2021-04-13 | 2021-04-15 | 91 |  |  | 7d | 0d | start no earlier than 2021-04-13 | Алексей Д. | 12h |  | 18,000 |  |

| ID | WBS | Task | Duration | Start | Finish | Predecessors | Total slack | Free slack | Constraint | Resources | Work | Cost |
| --- | --- | --- | --- | --- | --- | --- | --- | --- | --- | --- | --- | --- |
| 94 | 5 | **Этап 5. Движение 2** | 15.62d? | 2021-04-15 | 2021-05-07 |  | 4.12d |  |  |  | 81h | 121,500 |
| 95 | 5.1 | Начать тренировку | 2d? | 2021-04-15 | 2021-04-20 | 92 | 7d | 0d |  | Алексей Д. | 12h | 18,000 |
| 96 | 5.2 | Пульсовый график | 1d? | 2021-04-20 | 2021-04-21 | 95 | 7d | 1.62d |  | Алексей Д. | 6h | 9,000 |
| 97 | 5.3 | Пульс по зонам интенсивности (считывание пульса) | 1.25d? | 2021-04-23 | 2021-04-26 | 96 | 5.38d | 0.75d | start no earlier than 2021-04-23 | Алексей Д. | 9h | 13,500 |
| 98 | 5.4 | Экран групп мышц | 2d? | 2021-04-27 | 2021-04-28 | 97 | 4.62d | 0d | start no earlier than 2021-04-27 | Алексей Д. | 12h | 18,000 |
| 99 | 5.5 | Apple Health/Google Fit (health) | 1d? | 2021-04-29 | 2021-04-30 | 98 | 4.62d | 0.5d |  | Алексей Д. | 12h | 18,000 |
| 100 | 5.6 | Интеграция с кардиомониторами | 2d? | 2021-05-03 | 2021-05-04 | 99 | 4.12d | 0d | start no earlier than 2021-05-03 | Алексей Д. | 12h | 18,000 |
| 101 | 5.7 | Уведомления Push | 2.5d? | 2021-05-05 | 2021-05-07 | 100 | 4.12d | 0.5d |  | Алексей Д. | 18h | 27,000 |
| 103 | 6 | **Этап 6. Полезные инструменты/Каталог знаний** | 40d? | 2021-03-24 | 2021-05-18 |  | 24.25d |  |  |  | 38h | 56,600 |
| 104 | 6.1 | **Backend** | 1d? | 2021-03-24 | 2021-03-24 |  | 63.25d |  |  |  | 4h | 5,600 |
| 105 | 6.1.1 | Хранение данных о курении | 1d? | 2021-03-24 | 2021-03-24 | 83 | 63.25d | 0d |  | Павел Д. [50%] | 4h | 5,600 |
| 106 | 6.2 | **Frontend** | 7d? | 2021-05-10 | 2021-05-18 |  | 3.62d |  |  |  | 34h | 51,000 |
| 107 | 6.2.1 | Полезные инструменты | 0.75d? | 2021-05-10 | 2021-05-10 | 101 | 3.62d | 0d | start no earlier than 2021-05-10 | Алексей Д. | 6h | 9,000 |
| 108 | 6.2.2 | Умный будильник | 1.5d? | 2021-05-10 | 2021-05-12 | 107 | 3.62d | 0d |  | Алексей Д. | 6h | 9,000 |
| 109 | 6.2.3 | Курение | 1.88d? | 2021-05-12 | 2021-05-14 | 108 | 3.62d | 0d |  | Алексей Д. | 9h | 13,500 |
| 110 | 6.2.4 | Локальные напоминания | 0.12d? | 2021-05-14 | 2021-05-14 | 109 | 3.62d | 0d |  | Алексей Д. | 1h | 1,500 |
| 111 | 6.2.5 | Список уведомлений | 1.75d? | 2021-05-14 | 2021-05-17 | 110 | 3.62d | 0d |  | Алексей Д. | 6h | 9,000 |
| 112 | 6.2.6 | Список статей по категориям таб | 1d? | 2021-05-18 | 2021-05-18 | 111 | 3.62d | 0d |  | Алексей Д. | 6h | 9,000 |
| 114 | 7 | **Этап 7. Функционал профиля/Питание** | 53.88d? | 2021-03-25 | 2021-06-08 |  | 13.62d |  |  |  | 80h | 119,800 |
| 115 | 7.1 | **Backend** | 0.25d? | 2021-03-25 | 2021-03-25 |  | 63.25d |  |  |  | 2h | 2,800 |
| 116 | 7.1.1 | Сохранение замеров | 0.25d? | 2021-03-25 | 2021-03-25 | 105 | 63.25d | 0d |  | Павел Д. | 2h | 2,800 |
| 117 | 7.2 | **Frontend** | 14.88d? | 2021-05-19 | 2021-06-08 |  | 3.62d |  |  |  | 78h | 117,000 |
| 118 | 7.2.1 | Компонент секций со шкалами и пороговыми значениями (нутриенты продукта) | 1.25d? | 2021-05-19 | 2021-05-20 | 112 | 3.62d | 0.75d |  | Алексей Д. | 6h | 9,000 |
| 119 | 7.2.2 | Прием пищи карточка | 1d? | 2021-05-21 | 2021-05-21 | 118 | 2.88d | 0d | start no earlier than 2021-05-21 | Алексей Д. | 6h | 9,000 |
| 120 | 7.2.3 | Прием пищи добавление | 1.75d? | 2021-05-24 | 2021-05-25 | 119 | 2.88d | 0d |  | Алексей Д. | 9h | 13,500 |
| 121 | 7.2.4 | Результаты тестирования | 1.5d? | 2021-05-25 | 2021-05-27 | 120 | 2.88d | 0.75d | start no earlier than 2021-05-25 | Алексей Д. | 12h | 18,000 |
| 122 | 7.2.5 | Настройки | 2d? | 2021-05-28 | 2021-05-31 | 121 | 2.12d | 0d | start no earlier than 2021-05-28 | Алексей Д. | 12h | 18,000 |
| 123 | 7.2.6 | Мои замеры, просмотр прогресса ИМТ, стептеста | 2d? | 2021-06-01 | 2021-06-03 | 122 | 2.12d | 0d |  | Алексей Д. | 18h | 27,000 |
| 124 | 7.2.7 | Вызов повторного тестирования 1 раз в 2 месяца | 1.38d? | 2021-06-03 | 2021-06-04 | 123 | 2.12d | 0d |  | Алексей Д. | 3h | 4,500 |
| 125 | 7.2.8 | Компонент календаря | 2d? | 2021-06-04 | 2021-06-08 | 124 | 13.62d |  |  | Алексей Д. | 12h | 18,000 |

| ID | WBS | Task | Duration | Start | Finish | Predecessors | Total slack | Free slack | Constraint | Resources | Work | Cost |
| --- | --- | --- | --- | --- | --- | --- | --- | --- | --- | --- | --- | --- |
| 127 | 8 | **Этап 8. Статистика (Банк здоровья)** | 67.25d? | 2021-03-25 | 2021-06-28 |  | 0d |  |  |  | 95h | 139,300 |
| 128 | 8.1 | **Backend** | 4d? | 2021-03-25 | 2021-03-31 |  | 63.25d |  |  |  | 32h | 44,800 |
| 129 | 8.1.1 | Интеграционные тесты | 3d? | 2021-03-26 | 2021-03-31 | 130 | 63.25d |  |  | Павел Д. | 24h | 33,600 |
| 130 | 8.1.2 | Экраны статистики API | 1d? | 2021-03-25 | 2021-03-26 | 116 | 63.25d | 0d |  | Павел Д. | 8h | 11,200 |
| 131 | 8.2 | **Frontend** | 13.5d | 2021-06-09 | 2021-06-28 |  | 0d |  |  |  | 63h | 94,500 |
| 132 | 8.2.1 | Компонент выбора периода или даты для статистики | 1.5d | 2021-06-09 | 2021-06-10 | 124 | 0d |  | start no earlier than 2021-06-09 | Алексей Д. | 6h | 9,000 |
| 133 | 8.2.2 | Радиальная шкала недосыпа (вместо трех разных) | 1.5d | 2021-06-10 | 2021-06-14 | 132 | 0d |  |  | Алексей Д. | 6h | 9,000 |
| 134 | 8.2.3 | Радиальная шкала общая | 1d | 2021-06-14 | 2021-06-15 | 133 | 0d |  |  | Алексей Д. | 6h | 9,000 |
| 135 | 8.2.4 | Экран статистики с таб навигацией 13 | 1.25d | 2021-06-15 | 2021-06-16 | 134 | 0d |  |  | Алексей Д. | 6h | 9,000 |
| 136 | 8.2.5 | Таб статистика сон (-радиальная шкала) | 1.5d | 2021-06-16 | 2021-06-17 | 135 | 0d |  |  | Алексей Д. | 6h | 9,000 |
| 137 | 8.2.6 | Таб статистика питание (-радиальная шкала, -горизонтальные шкалы, +употребление воды) | 1.75d | 2021-06-18 | 2021-06-21 | 136 | 0d |  |  | Алексей Д. | 9h | 13,500 |
| 138 | 8.2.7 | Таб статистика активность (-радиальная шкала) | 1.5d | 2021-06-21 | 2021-06-23 | 137 | 0d |  |  | Алексей Д. | 6h | 9,000 |
| 139 | 8.2.8 | Статистика сон период (-календарь, сон за неделю/достаточность сна за неделю) | 0.88d | 2021-06-23 | 2021-06-24 | 138 | 0d |  |  | Алексей Д. | 6h | 9,000 |
| 140 | 8.2.9 | Статистика питание период (-календарь) | 1d | 2021-06-24 | 2021-06-25 | 139 | 0d |  |  | Алексей Д. | 6h | 9,000 |
| 141 | 8.2.10 | Статистика активность период (-календарь) | 1.38d | 2021-06-25 | 2021-06-28 | 140 | 0d |  |  | Алексей Д. | 6h | 9,000 |
