# HLS Development

Schedule from ProjectLibre, 2021-01-01 to 2021-01-19.

## Calendars

- Пятидневка: Mon-Fri 08:00-12:00, 13:00-17:00; Sat-Sun off.

## Resources

| Resource | Rate |
| --- | --- |
| Не назначено |  |
| Алексей Д. | 1500 |
| Павел Д. | 1400 |

## Schedule

| ID | WBS | Task | Duration | Start | Finish | Predecessors |
| --- | --- | --- | --- | --- | --- | --- |
| 1 | 1 | **Этап 1. Создание проекта/Авторизация/Чат** | 12.75d? | 2021-01-01 | 2021-01-19 |  |
| 2 | 1.1 | Создание и настройка проекта | 0.75d | 2021-01-01 | 2021-01-01 |  |
| 3 | 1.2 | Навигация | 1.5d | 2021-01-01 | 2021-01-05 | 2 |
| 4 | 1.3 | Верстка базовых компонентов | 1.5d | 2021-01-05 | 2021-01-06 | 3 |
| 5 | 1.4 | Слайдер приветствие | 0.75d | 2021-01-06 | 2021-01-07 | 4 |
| 6 | 1.5 | Авторизация | 0.75d | 2021-01-07 | 2021-01-08 | 5 |
| 7 | 1.6 | Подтверждение кода | 0.75d | 2021-01-08 | 2021-01-08 | 6 |
| 8 | 1.7 | Движок чата | 1.5d | 2021-01-11 | 2021-01-12 | 7 |
| 9 | 1.8 | Опрос приветствие | 1.12d | 2021-01-12 | 2021-01-13 | 8 |
| 10 | 1.9 | Опрос по питанию | 1.12d | 2021-01-13 | 2021-01-14 | 9 |
| 11 | 1.10 | Опрос по образу жизни | 0.75d | 2021-01-14 | 2021-01-15 | 10 |
| 12 | 1.11 | Опрос по состоянию здоровья | 2.25d | 2021-01-15 | 2021-01-19 | 11 |
| 14 | 1.12 | **Этап 2. Каталог продуктов** | 7.88d? | 2021-01-01 | 2021-01-12 |  |
| 15 | 1.12.1 | Список категорий | 1d? | 2021-01-01 | 2021-01-01 |  |
| 16 | 1.12.2 | Список подкатегорий | 1d? | 2021-01-01 | 2021-01-01 |  |
| 17 | 1.12.3 | Отображение продукта | 1d? | 2021-01-01 | 2021-01-01 |  |
| 18 | 1.12.4 | Дашбоард (верстка) | 1d? | 2021-01-01 | 2021-01-01 |  |
| 19 | 1.12.5 | Фильтрация каталога | 1d? | 2021-01-01 | 2021-01-01 |  |
| 20 | 1.12.6 | Поиск по каталогу | 1d? | 2021-01-01 | 2021-01-01 |  |
| 22 | 1.12.7 | **Этап 3. Дашборд/профиль** | 7.88d? | 2021-01-01 | 2021-01-12 |  |
| 23 | 1.12.7.1 | Дашбоард (подсадка) | 1d? | 2021-01-01 | 2021-01-01 |  |
| 24 | 1.12.7.2 | Компонент просмотра конента (каталог знаний) | 1d? | 2021-01-01 | 2021-01-01 |  |
| 25 | 1.12.7.3 | - Список статей | 1d? | 2021-01-01 | 2021-01-01 |  |
| 26 | 1.12.7.4 | - Компонент типа новость | 1d? | 2021-01-01 | 2021-01-01 |  |
| 27 | 1.12.7.5 | - Компонент типа сторис (упрощен объект) | 1d? | 2021-01-01 | 2021-01-01 |  |
| 28 | 1.12.7.6 | - Компонент типа видео | 1d? | 2021-01-01 | 2021-01-01 |  |
| 29 | 1.12.7.7 | Результаты анкетирования/профиль 12 | 1d? | 2021-01-01 | 2021-01-01 |  |
| 30 | 1.12.7.8 | - Верстка/подсадка | 1d? | 2021-01-01 | 2021-01-01 |  |
| 31 | 1.12.7.9 | - Макроцикл | 1d? | 2021-01-01 | 2021-01-01 |  |
| 32 | 1.12.7.10 | - Мезоцикл | 1d? | 2021-01-01 | 2021-01-01 |  |
| 33 | 1.12.7.11 | - График компенсации | 1d? | 2021-01-01 | 2021-01-01 |  |
| 34 | 1.12.7.12 | - Редактирование | 1d? | 2021-01-01 | 2021-01-01 |  |

| ID | WBS | Task | Duration | Start | Finish |
| --- | --- | --- | --- | --- | --- |
| 36 | 1.12.7.13 | **Этап 4. Режим дня/Движение** | 7.88d? | 2021-01-01 | 2021-01-12 |
| 37 | 1.12.7.13.1 | Режим дня (ночь) | 1d? | 2021-01-01 | 2021-01-01 |
| 38 | 1.12.7.13.2 | Режим дня (день) | 1d? | 2021-01-01 | 2021-01-01 |
| 39 | 1.12.7.13.3 | Добавить данные (отметьте тренировку на часах) | 1d? | 2021-01-01 | 2021-01-01 |
| 40 | 1.12.7.13.4 | Добавить тренировку поиск | 1d? | 2021-01-01 | 2021-01-01 |
| 41 | 1.12.7.13.5 | Добавить тренировку (каталог) | 1d? | 2021-01-01 | 2021-01-01 |
| 42 | 1.12.7.13.6 | Резутаты после добавления | 1d? | 2021-01-01 | 2021-01-01 |
| 43 | 1.12.7.13.7 | Каталог тренировок таб | 1d? | 2021-01-01 | 2021-01-01 |
| 44 | 1.12.7.13.8 | Просмотр тренировки | 1d? | 2021-01-01 | 2021-01-01 |
| 46 | 1.12.7.13.9 | **Этап 5. Движение 2** | 7.88d? | 2021-01-01 | 2021-01-12 |
| 47 | 1.12.7.13.9.1 | Начать тренировку | 1d? | 2021-01-01 | 2021-01-01 |
| 48 | 1.12.7.13.9.2 | Пульсовый график | 1d? | 2021-01-01 | 2021-01-01 |
| 49 | 1.12.7.13.9.3 | Пульс по зонам интенсивности (считывание пульса) | 1d? | 2021-01-01 | 2021-01-01 |
| 50 | 1.12.7.13.9.4 | Экран групп мышц | 1d? | 2021-01-01 | 2021-01-01 |
| 51 | 1.12.7.13.9.5 | Apple Health/Google Fit (health) | 1d? | 2021-01-01 | 2021-01-01 |
| 52 | 1.12.7.13.9.6 | Интеграция с кардиомониторами | 1d? | 2021-01-01 | 2021-01-01 |
| 53 | 1.12.7.13.9.7 | Уведомления Push | 1d? | 2021-01-01 | 2021-01-01 |
| 54 | 1.12.7.13.9.8 | Взаимодействие | 1d? | 2021-01-01 | 2021-01-01 |
| 55 | 1.12.7.13.9.9 | Доп. правки | 1d? | 2021-01-01 | 2021-01-01 |
| 57 | 1.12.7.13.9.10 | **Этап 6. Полезные инструменты/Каталог знаний** | 7.88d? | 2021-01-01 | 2021-01-12 |
| 58 | 1.12.7.13.9.10.1 | Полезные инструменты | 1d? | 2021-01-01 | 2021-01-01 |
| 59 | 1.12.7.13.9.10.2 | Биоритмы | 1d? | 2021-01-01 | 2021-01-01 |
| 60 | 1.12.7.13.9.10.3 | Умный будильник | 1d? | 2021-01-01 | 2021-01-01 |
| 61 | 1.12.7.13.9.10.4 | Проверка качества список | 1d? | 2021-01-01 | 2021-01-01 |
| 62 | 1.12.7.13.9.10.5 | Проверка качества просмотр | 1d? | 2021-01-01 | 2021-01-01 |
| 63 | 1.12.7.13.9.10.6 | Проверка качества аналоги | 1d? | 2021-01-01 | 2021-01-01 |
| 64 | 1.12.7.13.9.10.7 | Курение | 1d? | 2021-01-01 | 2021-01-01 |
| 65 | 1.12.7.13.9.10.8 | Таблица пищевых добавок (поиск) | 1d? | 2021-01-01 | 2021-01-01 |
| 66 | 1.12.7.13.9.10.9 | Просмотр добавки | 1d? | 2021-01-01 | 2021-01-01 |
| 67 | 1.12.7.13.9.10.10 | Локальные напоминания | 1d? | 2021-01-01 | 2021-01-01 |
| 68 | 1.12.7.13.9.10.11 | Список уведомлений | 1d? | 2021-01-01 | 2021-01-01 |
| 69 | 1.12.7.13.9.10.12 | Список статей по категориям таб | 1d? | 2021-01-01 | 2021-01-01 |
| 70 | 1.12.7.13.9.10.13 | Создать пост для сторис | 1d? | 2021-01-01 | 2021-01-01 |

| ID | WBS | Task | Duration | Start | Finish | Predecessors |
| --- | --- | --- | --- | --- | --- | --- |
| 72 | 1.12.7.13.9.10.14 | **Этап 7. Функционал профиля/Питание** | 7.88d? | 2021-01-01 | 2021-01-12 |  |
| 73 | 1.12.7.13.9.10.14.1 | Компонент секций со шкалами и пороговыми значениями (нутриенты продукта) | 1d? | 2021-01-01 | 2021-01-01 |  |
| 74 | 1.12.7.13.9.10.14.2 | Прием пищи карточка | 1d? | 2021-01-01 | 2021-01-01 |  |
| 75 | 1.12.7.13.9.10.14.3 | Прием пищи добавление | 1d? | 2021-01-01 | 2021-01-01 |  |
| 76 | 1.12.7.13.9.10.14.4 | Смена заставки (?) | 1d? | 2021-01-01 | 2021-01-01 |  |
| 77 | 1.12.7.13.9.10.14.5 | Результаты тестирования (?) | 1d? | 2021-01-01 | 2021-01-01 |  |
| 78 | 1.12.7.13.9.10.14.6 | Избранное (?) | 1d? | 2021-01-01 | 2021-01-01 |  |
| 79 | 1.12.7.13.9.10.14.7 | Настройки 14 | 1d? | 2021-01-01 | 2021-01-01 |  |
| 80 | 1.12.7.13.9.10.14.8 | Мои замеры, просмотр прогресса ИМТ, стептеста | 1d? | 2021-01-01 | 2021-01-01 |  |
| 81 | 1.12.7.13.9.10.14.9 | Вызов повторного тестирования 1 раз в 2 месяца | 1d? | 2021-01-01 | 2021-01-01 |  |
| 82 | 1.12.7.13.9.10.14.10 | Компонент календаря | 1d? | 2021-01-01 | 2021-01-01 |  |
| 84 | 1.12.7.13.9.10.14.11 | **Этап 8. Статистика (Банк здоровья)** | 7.88d | 2021-01-01 | 2021-01-12 |  |
| 85 | 1.12.7.13.9.10.14.11.1 | Компонент выбора периода или даты для статистики | 0.75d | 2021-01-01 | 2021-01-01 |  |
| 86 | 1.12.7.13.9.10.14.11.2 | Радиальная шкала недосыпа (вместо трех разных) | 0.75d | 2021-01-01 | 2021-01-04 | 85 |
| 87 | 1.12.7.13.9.10.14.11.3 | Радиальная шкала общая | 0.75d | 2021-01-04 | 2021-01-05 | 86 |
| 88 | 1.12.7.13.9.10.14.11.4 | Экран статистики с таб навигацией 13 | 0.75d | 2021-01-05 | 2021-01-05 | 87 |
| 89 | 1.12.7.13.9.10.14.11.5 | Таб статистика сон (-радиальная шкала) | 0.75d | 2021-01-06 | 2021-01-06 | 88 |
| 90 | 1.12.7.13.9.10.14.11.6 | Таб статистика питание (-радиальная шкала, -горизонтальные шкалы, +употребление воды) | 1.12d | 2021-01-06 | 2021-01-07 | 89 |
| 91 | 1.12.7.13.9.10.14.11.7 | Таб статистика активность (-радиальная шкала) | 0.75d | 2021-01-07 | 2021-01-08 | 90 |
| 92 | 1.12.7.13.9.10.14.11.8 | Статистика сон период (-календарь, сон за неделю/достаточность сна за неделю) | 0.75d | 2021-01-08 | 2021-01-11 | 91 |
| 93 | 1.12.7.13.9.10.14.11.9 | Статистика питание период (-календарь) | 0.75d | 2021-01-11 | 2021-01-12 | 92 |
| 94 | 1.12.7.13.9.10.14.11.10 | Статистика активность период (-календарь) | 0.75d | 2021-01-12 | 2021-01-12 | 93 |
